# 软件开发

Schedule from MS Project, 2015-09-20 to 2015-12-02, A marks actual dates.

## Calendars

- 标准: Mon-Fri 08:00-12:00, 13:00-17:00; Sat-Sun off. Exceptions (off unless hours are given): 2015-09-20 08:00-12:00, 13:00-17:00, 2015-09-26 to 2015-09-27 08:00-12:00, 13:00-17:00, 2015-10-03 08:00-12:00, 13:00-17:00.

## Resources

| Resource |
| --- |
| 钟础彬 |
| 方睿 |
| 张炎炎 |
| 程志雷 |
| 段宏斌 |
| 徐芬 |
| 曹胜伟 |

## Schedule

| ID | WBS | Task | Duration | Start | Finish | Predecessors | Complete | Remaining | Total slack | Free slack | Deadline | Resources | Work | Actual work |
| --- | --- | --- | --- | --- | --- | --- | --- | --- | --- | --- | --- | --- | --- | --- |
| 1 | 1 | **分析/软件需求** | 6d | 2015-09-20 08:00 A | 2015-09-25 17:00 |  | 86% | 0.81d | 0d |  | 2015-09-25 17:00 |  | 80h | 72h |
| 2 | 1.1 | 行为需求分析 | 1d | 2015-09-20 08:00 A | 2015-09-20 17:00 A |  | 100% |  |  |  |  | 钟础彬 | 8h | 8h |
| 3 | 1.2 | 制定项目计划书 | 1d | 2015-09-21 08:00 A | 2015-09-21 17:00 A | 2 | 100% |  |  |  |  | 钟础彬 | 8h | 8h |
| 4 | 1.3 | 根据修改意见重新制定项目计划书 | 4h | 2015-09-22 08:00 A | 2015-09-22 12:00 A | 3 | 100% |  |  |  |  | 程志雷; 方睿 | 8h | 8h |
| 5 | 1.4 | 人事档案模块建模 | 4h | 2015-09-22 13:00 A | 2015-09-22 17:00 A | 4 | 100% |  |  |  |  | 曹胜伟 | 4h | 4h |
| 6 | 1.5 | 人事调配模块建模 | 4h | 2015-09-22 13:00 A | 2015-09-22 17:00 | 4 | 99% | 0h | 3d |  |  | 程志雷; 张炎炎 | 4h | 4h |
| 7 | 1.6 | 教育培训模块建模 | 4h | 2015-09-22 13:00 A | 2015-09-22 17:00 A | 4 | 100% |  |  |  |  | 徐芬; 方睿 | 8h | 8h |
| 8 | 1.7 | 系统管理模块建模 | 16h | 2015-09-23 08:00 A | 2015-09-24 17:00 A | 4 | 100% |  |  |  |  | 段宏斌; 钟础彬 | 32h | 32h |
| 9 | 1.8 | 文档撰写 | 8h | 2015-09-25 08:00 | 2015-09-25 17:00 | 8 |  |  | 0d |  |  | 钟础彬 | 8h |  |
| 10 | 1.9 | 分析工作完成 | 3h | 2015-09-24 08:00 A | 2015-09-24 11:00 A | 9 | 100% |  |  |  |  |  |  |  |
| 11 | 2 | **系统设计** | 4d | 2015-09-25 08:00 | 2015-09-28 17:00 |  |  |  |  |  | 2015-10-19 17:00 |  | 88h |  |
| 12 | 2.1 | 人事档案处理流程设计 | 4h | 2015-09-25 08:00 | 2015-09-25 12:00 | 10 |  |  | 3.5d | 0d |  | 曹胜伟 | 4h |  |
| 13 | 2.2 | 人事档案类图设计 | 8h | 2015-09-25 13:00 | 2015-09-26 12:00 | 12 |  |  | 2.5d |  |  | 曹胜伟 | 8h |  |
| 14 | 2.3 | 人事档案界面设计 | 4h | 2015-09-25 08:00 | 2015-09-25 12:00 |  |  |  | 3d | 0d |  | 曹胜伟 | 4h |  |
| 15 | 2.4 | 人事档案数据库E-R图设计 | 4h | 2015-09-25 13:00 | 2015-09-25 17:00 | 14 |  |  | 3d | 0d |  | 曹胜伟 | 4h |  |
| 16 | 2.5 | 人事档案物理设计 | 4h | 2015-09-26 08:00 | 2015-09-26 12:00 | 15 |  |  | 3d | 0d |  | 曹胜伟 | 4h |  |
| 17 | 2.6 | 根据物理设计图生成数据库表 | 4h | 2015-09-26 13:00 | 2015-09-26 17:00 | 16 |  |  | 2d |  |  | 曹胜伟 | 4h |  |
| 18 | 2.7 | 人事调配流程设计 | 4h | 2015-09-25 08:00 | 2015-09-25 12:00 |  |  |  | 3d | 0d |  | 程志雷; 张炎炎 | 8h |  |
| 19 | 2.8 | 人事调配类图设计 | 4h | 2015-09-25 13:00 | 2015-09-25 17:00 | 18 |  |  | 3d |  |  | 程志雷; 张炎炎 | 8h |  |
| 20 | 2.9 | 绘制人事调配E-R图 | 4h | 2015-09-25 08:00 | 2015-09-25 12:00 |  |  |  | 0d |  |  | 程志雷; 张炎炎 | 8h |  |
| 21 | 2.10 | 人事调配物理设计 | 4h | 2015-09-25 13:00 | 2015-09-25 17:00 | 20 |  |  | 0d |  |  | 张炎炎; 程志雷 | 8h |  |
| 22 | 2.11 | 根据人事调配物理设计生成数据库表 | 2h | 2015-09-26 08:00 | 2015-09-26 10:00 | 21 |  |  | 0d |  |  | 程志雷 | 2h |  |
| 23 | 2.12 | 教育培训流程设计 | 3h | 2015-09-26 10:00 | 2015-09-26 14:00 | 22 |  |  | 0d |  |  | 徐芬; 方睿 | 6h |  |
| 24 | 2.13 | 教育培训E-R图 | 2h | 2015-09-26 14:00 | 2015-09-26 16:00 | 23 |  |  | 0d |  |  | 徐芬; 方睿 | 4h |  |
| 25 | 2.14 | 系统管理模块详细设计 | 8h | 2015-09-26 16:00 | 2015-09-27 16:00 | 24 |  |  | 0d |  |  | 段宏斌; 钟础彬 | 16h |  |
| 26 | 2.15 | 设计工作完成 | 2h | 2015-09-27 16:00 | 2015-09-28 09:00 | 25 |  |  | 0d |  |  |  |  |  |

| ID | WBS | Task | Type | Duration | Start | Finish | Predecessors | Total slack | Free slack | Resources | Work |
| --- | --- | --- | --- | --- | --- | --- | --- | --- | --- | --- | --- |
| 27 | 3 | **开发** |  | 21.75d | 2015-09-28 09:00 | 2015-10-26 16:00 |  | 0d |  |  | 264h |
| 28 | 3.1 | 审阅功能规范 |  | 1d | 2015-09-28 09:00 | 2015-09-29 09:00 | 26 | 0d |  | 程志雷 | 8h |
| 29 | 3.2 | 确定模块化/分层设计参数 |  | 1d | 2015-09-29 09:00 | 2015-09-30 09:00 | 28 | 0d |  | 程志雷 | 8h |
| 30 | 3.3 | 分派任务给开发人员 |  | 1d | 2015-09-30 09:00 | 2015-10-01 09:00 | 29 | 0d |  | 程志雷 | 8h |
| 31 | 3.4 | 编写代码 |  | 15d | 2015-10-01 09:00 | 2015-10-21 09:00 | 30 | 0d |  | 程志雷 | 120h |
| 32 | 3.5 | 开发人员测试(初步调试) |  | 15d | 2015-10-05 16:00 | 2015-10-26 16:00 | 31FS-7.5% | 0d |  | 程志雷 | 120h |
| 33 | 3.6 | 开发工作完毕 | milestone | 0d | 2015-10-26 16:00 | 2015-10-26 16:00 | 32 | 0d |  |  |  |
| 34 | 4 | **测试** |  | 48.75d | 2015-09-28 09:00 | 2015-12-02 16:00 |  | 0d |  |  | 280h |
| 35 | 4.1 | 根据产品规范制定单元测试计划 |  | 4d | 2015-09-28 09:00 | 2015-10-02 09:00 | 26 | 17.75d |  | 段宏斌 | 32h |
| 36 | 4.2 | 根据产品规范制定整体测试计划 |  | 4d | 2015-09-28 09:00 | 2015-10-02 09:00 | 26 | 44.75d |  | 段宏斌 | 32h |
| 37 | 4.3 | **单元测试** |  | 15d | 2015-10-26 16:00 | 2015-11-16 16:00 |  | 0d |  |  | 120h |
| 38 | 4.3.1 | 审阅模块化代码 |  | 5d | 2015-10-26 16:00 | 2015-11-02 16:00 | 35, 33 | 0d |  | 段宏斌 | 40h |
| 39 | 4.3.2 | 测试组件模块是否符合产品规范 |  | 2d | 2015-11-02 16:00 | 2015-11-04 16:00 | 33, 38 | 0d |  | 段宏斌 | 16h |
| 40 | 4.3.3 | 找出不符合产品规范的异常情况 |  | 3d | 2015-11-04 16:00 | 2015-11-09 16:00 | 39 | 0d |  | 段宏斌 | 24h |
| 41 | 4.3.4 | 修改代码 |  | 3d | 2015-11-09 16:00 | 2015-11-12 16:00 | 40 | 0d |  | 段宏斌 | 24h |
| 42 | 4.3.5 | 重新测试经过修改的代码 |  | 2d | 2015-11-12 16:00 | 2015-11-16 16:00 | 41 | 0d |  | 段宏斌 | 16h |
| 43 | 4.3.6 | 单元测试完成 | milestone | 0d | 2015-11-16 16:00 | 2015-11-16 16:00 | 42 | 0d |  |  |  |
| 44 | 4.4 | **整体测试** |  | 12d | 2015-11-16 16:00 | 2015-12-02 16:00 |  | 0d |  |  | 96h |
| 45 | 4.4.1 | 测试模块集成情况 |  | 5d | 2015-11-16 16:00 | 2015-11-23 16:00 | 43 | 0d |  | 段宏斌 | 40h |
| 46 | 4.4.2 | 找出不符合规范的异常情况 |  | 2d | 2015-11-23 16:00 | 2015-11-25 16:00 | 45 | 0d |  | 段宏斌 | 16h |
| 47 | 4.4.3 | 修改代码 |  | 3d | 2015-11-25 16:00 | 2015-11-30 16:00 | 46 | 0d |  | 段宏斌 | 24h |
| 48 | 4.4.4 | 重新测试经过修改的代码 |  | 2d | 2015-11-30 16:00 | 2015-12-02 16:00 | 47 | 0d |  | 段宏斌 | 16h |
| 49 | 4.4.5 | 整体测试完成 | milestone | 0d | 2015-12-02 16:00 | 2015-12-02 16:00 | 48 | 0d |  |  |  |
| 50 | 5 | **文档** |  | 30.5d | 2015-09-28 09:00 | 2015-11-06 14:00 |  | 18.25d |  |  | 336h |
| 51 | 5.1 | 制定“帮助”规范 |  | 1d | 2015-09-28 09:00 | 2015-09-29 09:00 | 26 | 27.75d | 9.5d | 曹胜伟 | 8h |
| 52 | 5.2 | 开发“帮助”系统 |  | 3w | 2015-10-09 14:00 | 2015-10-30 14:00 | 51, 31FS-5% | 18.25d | 0d | 曹胜伟 | 120h |
| 53 | 5.3 | 审阅“帮助”文档 |  | 3d | 2015-10-30 14:00 | 2015-11-04 14:00 | 52 | 18.25d | 0d | 曹胜伟 | 24h |
| 54 | 5.4 | 根据反馈修改“帮助”文档 |  | 2d | 2015-11-04 14:00 | 2015-11-06 14:00 | 53 | 18.25d | 0d | 曹胜伟 | 16h |
| 55 | 5.5 | 制定用户手册规范 |  | 2d | 2015-09-28 09:00 | 2015-09-30 09:00 | 26 | 27.75d | 8.5d | 曹胜伟 | 16h |
| 56 | 5.6 | 编写用户手册 |  | 3w | 2015-10-09 14:00 | 2015-10-30 14:00 | 55, 31FS-5% | 19.25d | 0d | 曹胜伟 | 120h |
| 57 | 5.7 | 审阅所有的用户文档 |  | 2d | 2015-10-30 14:00 | 2015-11-03 14:00 | 56 | 19.25d | 0d | 曹胜伟 | 16h |
| 58 | 5.8 | 根据反馈修改用户文档 |  | 2d | 2015-11-03 14:00 | 2015-11-05 14:00 | 57 | 19.25d | 1d | 曹胜伟 | 16h |
| 59 | 5.9 | 文档完成 | milestone | 0d | 2015-11-06 14:00 | 2015-11-06 14:00 | 58, 54 | 18.25d |  |  |  |

| ID | WBS | Task | Type | Duration | Start | Finish | Predecessors | Total slack | Free slack | Resources | Work |
| --- | --- | --- | --- | --- | --- | --- | --- | --- | --- | --- | --- |
| 60 | 6 | **实施工作结束后的回顾** |  | 3d | 2015-09-24 08:00 | 2015-09-26 17:00 |  | 49.88d |  |  | 24h |
| 61 | 6.1 | 将经验教训记录存档 |  | 1d | 2015-09-24 08:00 | 2015-09-24 17:00 |  | 50.88d | 0d | 方睿 | 8h |
| 62 | 6.2 | 分发给工作组成员 |  | 1d | 2015-09-25 08:00 | 2015-09-25 17:00 | 61 | 50.88d | 0d | 方睿 | 8h |
| 63 | 6.3 | 建立软件维护小组 |  | 1d | 2015-09-26 08:00 | 2015-09-26 17:00 | 62 | 49.88d | 0d | 方睿 | 8h |
| 64 | 6.4 | 回顾完成 | milestone | 0d | 2015-09-26 17:00 | 2015-09-26 17:00 | 63 | 50.88d | 0d |  |  |
| 65 | 7 | 软件开发模板结束 | milestone | 0d | 2015-09-26 17:00 | 2015-09-26 17:00 | 64 | 50.88d |  |  |  |
